# YNCA EI Software and Advanced HMI - Global Planning and Control

Schedule from MS Project, 2015-02-02 to 2015-09-25, 8.5 hours a day, A marks actual dates.
Yazaki

## Calendars

- Standard: Mon-Fri 08:00-13:00, 14:00-17:30; Sat-Sun off.

## Resources

| Resource | Group |
| --- | --- |
| Edgar Rios | MGMT |
| Eric Sanchez | HMI |
| Fernando Villarreal | HMI |
| Roberto Flores | HMI |
| Sergio Espinoza | HMI |
| Gerardo Silos | SW1 |
| Natan Santoyo | SW1 |
| Lucia Sepulveda | SW1 |
| Dionisio Garcia | SW1 |
| Luis Trasfi | SW1 |
| Gonzalo Cruz | SW1 |
| Eric Estrada | SW1 |
| Alejandro Quijas | SW2 |
| German Gomez | SW2 |
| Ivan Marquez | SW2 |
| Roberto Uranga | SW2 |
| Carlos Serrato | SW2 |
| Monica Fuentes | SW2 |
| Jose Rodriguez | SW2 |
| Isaias Acosta | VAL |

## Schedule

| ID | WBS | Task | Type | Duration | Start | Finish | Complete | Remaining | Baseline start | Baseline finish | Baseline duration | Total slack | Constraint | Resources | Work | Actual work |
| --- | --- | --- | --- | --- | --- | --- | --- | --- | --- | --- | --- | --- | --- | --- | --- | --- |
| 1 | 1 | **Pre requisitos** |  | 1d? | 2015-02-02 | 2015-02-02 |  |  | 2015-02-02 | 2015-02-02 | 1d? | 0d |  |  |  |  |
| 2 | 1.1 | UML Training | manual | 1d? | 2015-02-02 | 2015-02-02 |  |  | 2015-02-02 | 2015-02-02 | 1d? |  |  |  |  |  |
| 3 | 1.2 | CAN Basics | manual | 1d? | 2015-02-02 | 2015-02-02 |  |  | 2015-02-02 | 2015-02-02 | 1d? |  |  |  |  |  |
| 5 | 2 | **Preparacion** |  | 65d? | 2015-06-29 A | 2015-09-25 | 40% | 38.77d? | 2015-06-29 | 2015-09-25 | 65d? | 0d |  |  | 215.01h | 57.72h |
| 6 | 2.1 | Updated Deployment Diagram | manual | 2d | 2015-06-29 A | 2015-07-09 | 80% | 0.4d | 2015-06-29 | 2015-07-09 | 2d |  |  | Eric Sanchez [60%] | 10.2h | 8.16h |
| 7 | 2.2 | Kernel Setup | manual | 10d | 2015-06-29 A | 2015-07-28 | 85% | 1.5d | 2015-06-29 | 2015-07-28 | 10d |  |  | Eric Sanchez [15%] | 17.81h | 15.89h |
| 8 | 2.3 | Graphical Model implementation |  | 2d? | 2015-08-11 | 2015-08-12 |  |  | 2015-08-11 | 2015-08-12 | 2d? | 32d | start no earlier than 2015-08-11 | Eric Sanchez [50%]; Fernando Villarreal [50%] | 12.75h |  |
| 9 | 2.4 | Scripting Tool Communication Setup |  | 4d | 2015-08-12 | 2015-08-17 |  |  | 2015-08-12 | 2015-08-17 | 4d | 29d | start no earlier than 2015-08-12 | Sergio Espinoza [50%]; Eric Sanchez; Roberto Flores [50%] | 34h |  |
| 10 | 2.5 | Seleccion de plataforma | milestone | 0d | 2015-06-29 A | 2015-06-29 A | 100% |  | 2015-06-29 | 2015-06-29 | 0d |  |  | Eric Sanchez; Edgar Rios |  |  |
| 11 | 2.6 | Seleccion de Pantalla | milestone | 0d | 2015-07-03 A | 2015-07-03 A | 100% |  | 2015-07-03 | 2015-07-03 | 0d |  |  | Eric Sanchez; Edgar Rios |  |  |
| 12 | 2.7 | Definicion de WBS | manual | 2d | 2015-07-31 A | 2015-08-03 | 60% | 0.8d | 2015-07-31 | 2015-08-03 | 2d |  |  | Edgar Rios [30%]; Fernando Villarreal; Eric Sanchez; Roberto Flores | 56.1h | 33.66h |
| 13 | 2.8 | **Lab Setup (at YSSNMB)** |  | 0d | 2015-07-27 A | 2015-07-27 A | 100% |  | 2015-07-27 | 2015-07-27 | 0d |  |  | Edgar Rios |  |  |
| 14 | 2.8.1 | Compra de AVR CAN y Programmer | milestone, manual | 0d | 2015-07-27 A | 2015-07-27 A | 100% |  | 2015-07-27 | 2015-07-27 | 0d |  |  | Isaias Acosta |  |  |
| 15 | 2.9 | Semana I - Ejecucion |  | 5d | 2015-09-21 | 2015-09-25 |  |  | 2015-09-21 | 2015-09-25 | 5d | 0d | must start on 2015-09-21 |  |  |  |
| 16 | 2.10 | Definicion de Requerimientos | manual | 3d | 2015-08-14 | 2015-08-18 |  |  | 2015-08-14 | 2015-08-18 | 3d |  |  | Edgar Rios [30%]; Sergio Espinoza [50%]; Roberto Flores [50%]; Fernando Villarreal [50%]; Alejandro Quijas [50%]; Jose Rodriguez [50%]; Eric Sanchez [50%] | 84.15h |  |
| 18 | 3 | VirtualMeterProject |  | 41.41d? | 2015-07-28 A | 2015-09-25 | 42% | 24.07d? | 2015-07-28 | 2015-09-25 | 41.41d? | 0.06d |  |  | 1012.27h | 198h |

Notes:
- 2: Dr. Avila proveera entrenamiento en / ·Diagramas de Clases / ·Diagramas de Casos de Uso / ·Diagramas de Componentes
- 12: Definir entregables diarios para que los alumnos puedan ser evaluados
- 15: Confirmado con el Dr. Avila
